How a schedule from a web Gantt chart changed from version to version. A marks actual dates.

## Version 1 (saved 2026-09-01)

| ID | WBS | Task | Duration | Start | Finish | Complete |
| --- | --- | --- | --- | --- | --- | --- |
| 2 | 1 | **财务核算** | 395d | 2025-10-27 | 2027-04-30 | 9% |
| 3 | 1.1 | **总账接口** | 235d | 2025-10-27 | 2026-09-18 | 52% |
| 4 |  | 接口方案确定及其他准备工作 | 5d | 2025-10-27 | 2025-10-31 | 100% |
| 5 |  | 确认外部系统与本系统档案之间的对照关系，并完成配置 | 5d | 2026-09-07 | 2026-09-11 | 80% |
| 6 |  | 配置单据模板（需要使用辅助、会计科目规则档案在编码字段维护档案类型，修改字段名称） | 5d | 2026-09-07 | 2026-09-11 | 50% |
| 7 |  | 确认科目单据规则，并完成配置 | 5d | 2026-09-07 | 2026-09-11 | 50% |
| 8 |  | 确认业务场景维护，并完成配置 | 5d | 2026-09-07 | 2026-09-11 | 50% |
| 9 |  | 下载数据（自动下载数据或者手动下载数据） | 5d | 2026-09-07 | 2026-09-11 | 90% |
| 10 |  | 生成凭证并核对凭证金额 | 5d | 2026-09-14 | 2026-09-18 |  |
| 11 |  | 联查凭证 | 5d | 2026-09-14 | 2026-09-18 |  |
| 12 | 1.2 | **全面预算** | 44d | 2026-09-01 | 2026-10-30 | 17% |
| 13 |  | 预算执行中预算号，预算调整单，预算执行单的编码规则确认 | 4d | 2026-09-01 | 2026-09-04 | 80% |
| 14 |  | 确认预算号执行权限 | 4d | 2026-09-01 | 2026-09-04 | 80% |
| 15 |  | 确认预算执行的控制规则 | 4d | 2026-09-01 | 2026-09-04 | 80% |
| 16 |  | 基础数据导入 | 4d | 2026-09-01 | 2026-09-04 | 80% |
| 17 |  | 预算填报 | 40d | 2026-09-07 | 2026-10-30 |  |
| 18 |  | 预算指标权限分配 | 5d | 2026-09-07 | 2026-09-11 |  |
| 19 |  | 预算日常调整调剂单据表单以及审批流程的确认 | 7d | 2026-10-08 | 2026-10-16 |  |
| 20 |  | 预算中期调整流程及表单的确认 | 7d | 2026-10-08 | 2026-10-16 |  |
| 21 |  | 报销管理 | 61d | 2026-10-08 | 2026-12-31 |  |
| 23 |  | 应收应付 | 61d | 2026-10-08 | 2026-12-31 |  |
| 24 |  | 固定资产 | 40d | 2026-09-07 | 2026-10-30 |  |
| 25 |  | 薪酬管理 | 40d | 2026-09-07 | 2026-10-30 |  |
| 26 |  | 资金管理 | 17d | 2026-10-08 | 2026-10-30 |  |
| 27 |  | 成本管理 | 50d | 2027-02-22 | 2027-04-30 |  |
| 28 | 2 | **人力资源** | 1d | 2026-09-01 | 2026-09-01 |  |
| 29 |  | 考勤管理 | 1d | 2026-09-01 | 2026-09-01 |  |
| 30 |  | 年度考核 | 1d | 2026-09-01 | 2026-09-01 |  |
| 31 |  | 请假管理 | 1d | 2026-09-01 | 2026-09-01 |  |
| 32 | 3 | **物资管理** | 84d | 2026-09-07 | 2026-12-31 |  |
| 33 |  | 需求调研 | 10d | 2026-09-07 | 2026-09-18 |  |
| 34 |  | 系统实施 | 30d | 2026-09-21 | 2026-10-30 |  |
| 35 |  | 上线试运行 | 44d | 2026-11-02 | 2026-12-31 |  |
| 36 | 4 | **决策分析** | 71d | 2027-02-22 | 2027-05-31 |  |
| 37 |  | 人力主题 | 71d | 2027-02-22 | 2027-05-31 |  |
| 38 |  | 财务主题 | 71d | 2027-02-22 | 2027-05-31 |  |
| 39 |  | 物资主题 | 71d | 2027-02-22 | 2027-05-31 |  |

## Version 2 (saved 2026-09-01)

Last finish stays 2027-05-31.

Added:

| ID | Task | Duration | Start | Finish |
| --- | --- | --- | --- | --- |
| 22 | 上线前功能测试 | 18d | 2026-09-07 | 2026-09-30 |
| 23 | 培训资料资料准备 | 3d | 2026-09-28 | 2026-09-30 |
| 24 | 上线培训 | 1d | 2026-10-08 | 2026-10-08 |
| 25 | 试运行及功能优化 | 60d | 2026-10-09 | 2026-12-31 |
| 27 | 上线前功能测试 | 18d | 2026-09-07 | 2026-09-30 |
| 28 | 培训资料资料准备 | 3d | 2026-09-28 | 2026-09-30 |
| 29 | 上线培训 | 1d | 2026-10-08 | 2026-10-08 |
| 30 | 试运行及功能优化 | 60d | 2026-10-09 | 2026-12-31 |
| 32 | 上线前功能测试 | 5d | 2026-09-07 | 2026-09-11 |
| 33 | 培训资料资料准备 | 5d | 2026-09-14 | 2026-09-18 |
| 34 | 上线培训 | 1d | 2026-10-08 | 2026-10-08 |
| 35 | 导入9月最新资产卡片 | 2d | 2026-10-08 | 2026-10-09 |
| 36 | 系统上线使用并优化功能(按月计提折旧) | 59d | 2026-10-12 | 2026-12-31 |
| 37 | 调整、核实资产卡片数据 | 59d | 2026-10-12 | 2026-12-31 |
| 39 | 调整自动凭证生成规则 | 18d | 2026-09-07 | 2026-09-30 |
| 40 | 核对自动凭证生成费用分摊准确性 | 17d | 2026-10-08 | 2026-10-30 |
| 42 | 确认是否需要使用 | 1d | 2026-10-08 | 2026-10-08 |
| 46 | 康复科功能演示及优化 | 10d | 2026-09-14 | 2026-09-25 |
| 47 | 康复科线上排班功能试运行 | 23d | 2026-09-30 | 2026-10-30 |
| 48 | 确认【加班规则】【中夜班规则】【休假规则】【补贴规则】【考勤转换规则】【日历设置】，设计方案 | 7d | 2026-10-08 | 2026-10-16 |
| 49 | 【配置参数】确认并设置 | 7d | 2026-10-08 | 2026-10-16 |
| 50 | 考勤角色、考勤权限（资源权限和菜单权限） | 10d | 2026-10-19 | 2026-10-30 |
| 51 | 确认参与考勤的人员，批量导入（人员变动需及时更新） | 10d | 2026-10-19 | 2026-10-30 |
| 52 | 确认用户常用报表&自定义报表需求 | 5d | 2026-11-02 | 2026-11-06 |
| 53 | 【加班管理】流程（需考虑是否启用审批流） | 5d | 2026-11-02 | 2026-11-06 |
| 54 | 【排班管理】流程 | 5d | 2026-11-02 | 2026-11-06 |
| 55 | 【中夜班管理】流程（需考虑是否启用审批流） | 5d | 2026-11-02 | 2026-11-06 |
| 56 | 上线前功能测试及调整 | 10d | 2026-11-09 | 2026-11-20 |
| 57 | 培训资料准备 | 5d | 2026-11-23 | 2026-11-27 |
| 58 | 培训并上线 | 1d | 2026-11-30 | 2026-11-30 |
| 59 | 上线使用及功能优化 | 45d | 2026-12-01 | 2027-02-01 |
| 61 | 考核项目设置 | 5d | 2026-09-07 | 2026-09-11 |
| 62 | 考核模板设置 | 5d | 2026-09-14 | 2026-09-18 |
| 63 | 考核流程设置 | 8d | 2026-09-21 | 2026-09-30 |
| 64 | 年度考核上线使用 | 17d | 2026-10-08 | 2026-10-30 |
| 66 | 重新导入已请假记录 | 18d | 2026-09-07 | 2026-09-30 |
| 67 | 请假功能上线使用 | 1d | 2026-10-08 | 2026-10-08 |
| 68 | 上线试运行并优化功能 | 61d | 2026-10-08 | 2026-12-31 |
| 72 | 确认并进行物资基本分类设置 | 5d | 2026-09-14 | 2026-09-18 |
| 73 | 确认并进行物资核算分类设置 | 5d | 2026-09-14 | 2026-09-18 |
| 74 | 确认物资基本分类与核算分类对照关系，并进行设置 | 5d | 2026-09-14 | 2026-09-18 |
| 75 | 确认并进行计量单位档案设置 | 5d | 2026-09-14 | 2026-09-18 |
| 76 | 确认并进行仓库档案设置 | 5d | 2026-09-14 | 2026-09-18 |
| 77 | 确认并进行往来单位分类设置 | 5d | 2026-09-14 | 2026-09-18 |
| 78 | 进行物资档案设置 | 5d | 2026-09-14 | 2026-09-18 |
| 79 | 进行物资资质信息设置 | 5d | 2026-09-14 | 2026-09-18 |
| 80 | 确认物资管理应用的核算范围并设置 | 5d | 2026-09-14 | 2026-09-18 |
| 81 | 确认物资管理应用的计价方式并设置 | 5d | 2026-09-14 | 2026-09-18 |
| 82 | 确认物资分类、科室档案属性与财务会计科目对照关系并设置 | 5d | 2026-09-14 | 2026-09-18 |
| 83 | 进行物资管理系统参数设置 | 5d | 2026-09-14 | 2026-09-18 |
| 84 | 确认业务类型及参数并设置 | 5d | 2026-09-14 | 2026-09-18 |
| 85 | 业务单据的编码规则设置 | 6d | 2026-09-18 | 2026-09-25 |
| 86 | 常规采购耗材流程参照 | 6d | 2026-09-18 | 2026-09-25 |
| 87 | 采购自动补货流程参照（与普通采购流程） | 6d | 2026-09-18 | 2026-09-25 |
| 88 | 确定仓库的安全库存和最高库存，录入库存计划 | 6d | 2026-09-18 | 2026-09-25 |
| 89 | 确认HRP部门与仓库对照 | 6d | 2026-09-18 | 2026-09-25 |
| 90 | 条码规则配置（主条码配置规则） | 6d | 2026-09-18 | 2026-09-25 |
| 91 | 条码打印，用于入库后快捷批量打印主条码或唯一码 | 6d | 2026-09-18 | 2026-09-25 |
| 92 | 功能测试并调整 | 20d | 2026-09-28 | 2026-10-23 |
| 93 | 准备培训资料 | 4d | 2026-10-26 | 2026-10-29 |
| 94 | 根据上线前盘点数，录入期初库存。 | 4d | 2026-10-26 | 2026-10-29 |
| 95 | 期初库存核对无误后，库存期初导入形成存货核算的期初余额 | 2d | 2026-10-29 | 2026-10-30 |
| 96 | 确认期初暂估数据并录入 | 2d | 2026-10-29 | 2026-10-30 |
| 97 | 进行期初记账 | 1d | 2026-10-30 | 2026-10-30 |
| 98 | 培训并上线使用 | 1d | 2026-10-30 | 2026-10-30 |
| 99 | 采购暂估 | 3d | 2026-11-26 | 2026-11-30 |
| 100 | 存货成本计算 | 3d | 2026-11-26 | 2026-11-30 |
| 101 | 报表核对，医院可根据内部需求提供对账报表 | 3d | 2026-11-26 | 2026-11-30 |
| 102 | 生成凭证、月结 | 3d | 2026-11-26 | 2026-11-30 |
| 103 | 试运行并优化功能 | 108d | 2026-11-02 | 2027-03-31 |
| 104 | **医嘱核销接口(根据目前业务情况不建议使用)** | 10d | 2026-09-14 | 2026-09-25 |
| 105 | 确认HRP部门与HIS部门对照，用于与HIS收费接口 | 10d | 2026-09-14 | 2026-09-25 |
| 106 | 确认HRP部门与HIS部门对照，用于与HIS收费接口 | 10d | 2026-09-14 | 2026-09-25 |
| 107 | 确认物资与收费项目对照 | 10d | 2026-09-14 | 2026-09-25 |
| 108 | 普通可收费耗材管理流程（HIS与HRP接口，详见标准接口文档） | 1d | 2026-09-14 | 2026-09-14 |
| 109 | 高值耗材管理流程，HIS与HRP接口，详见标准接口文档 | 1d | 2026-09-14 | 2026-09-14 |

Changed:

| ID | Task | Start | Finish | Duration | Complete |
| --- | --- | --- | --- | --- | --- |
| 2 | **财务核算** |  |  |  | 9% → 7% |
| 21 | **报销管理** | 2026-10-08 → 2026-09-07 (-31d) |  | 61d → 84d |  |
| 26 | **应收应付** | 2026-10-08 → 2026-09-07 (-31d) |  | 61d → 84d |  |
| 31 | **固定资产** |  | 2026-10-30 → 2026-12-31 (+62d) | 40d → 84d |  |
| 41 | **资金管理** |  | 2026-10-30 → 2026-10-08 (-22d) | 17d → 1d |  |
| 44 | **人力资源** | 2026-09-01 → 2026-09-07 (+6d) | 2026-09-01 → 2027-02-01 (+153d) | 1d → 106d |  |
| 45 | **考勤管理** | 2026-09-01 → 2026-09-14 (+13d) | 2026-09-01 → 2027-02-01 (+153d) | 1d → 101d |  |
| 60 | **年度考核** | 2026-09-01 → 2026-09-07 (+6d) | 2026-09-01 → 2026-10-30 (+59d) | 1d → 40d |  |
| 65 | **请假管理** | 2026-09-01 → 2026-09-07 (+6d) | 2026-09-01 → 2026-12-31 (+121d) | 1d → 84d |  |
| 69 | **物资管理** |  | 2026-12-31 → 2027-03-31 (+90d) | 84d → 148d |  |
| 70 | 需求调研 |  | 2026-09-18 → 2026-09-11 (-7d) | 10d → 5d |  |
| 71 | **系统实施** | 2026-09-21 → 2026-09-14 (-7d) | 2026-10-30 → 2027-03-31 (+152d) | 30d → 143d |  |

## Version 3 (saved 2026-09-15)

Last finish stays 2027-05-31.

Added:

| ID | Task | Duration | Start | Finish |
| --- | --- | --- | --- | --- |
| 12 | **全面预算？** | 44d | 2026-09-01 | 2026-10-30 |

Removed: 12 全面预算
